# Plan

Schedule from MS Project, 2014-06-01 to 2015-05-02, status date 2014-06-01, costs in $.

## Calendars

- Standard: Mon-Sun 08:00-12:00, 13:00-17:00.

## Resources

| Resource | Rate |
| --- | --- |
| Phạm Thúy Loan | 0.19 |
| Nguyễn Thị Phương Liên | 0.19 |
| Nguyễn Thị Hương | 0.19 |
| Dương Thị Thảo | 0.19 |
| Trần Thị Thu Hằng | 0.19 |
| Trần Tuấn Hải | 0.19 |
| Chu Tiến Thành | 0.19 |
| Nguyễn Anh Tuấn | 0.19 |
| Nguyễn Trần Thành | 0.19 |
| Nguyễn Công Tự | 0.19 |
| Lê Đức Anh | 0.19 |
| Phạm Công Ước | 0.19 |
| Tôn Tích Dương Triều | 0.19 |
| Tạ Bảo Trung | 0.19 |
| Lê Tiến Dũng | 0.19 |
| Nguyễn Việt Phương | 0.19 |
| Nguyễn Phúc Đồng | 0.19 |
| Trần Phong Châu | 0.19 |
| Đoàn Anh Vũ | 0.19 |
| Nguyễn Phú Hưng | 0.19 |
| Nguyễn Lê Toàn | 0.19 |
| Lữ Quốc Hùng | 0.19 |
| Trần Thành Chung | 0.19 |
| Vũ Tiến Hào | 0.19 |
| Đào Xuân Thanh | 0.19 |
| Lê Thanh Xuân | 0.19 |
| Bùi Thị Thanh Mai | 0.19 |
| Lê Quang Hùng | 0.19 |
| Lê Trâm Anh | 0.19 |
| Nguyễn Thế Huỳnh | 0.19 |
| Nguyễn Việt Anh | 0.19 |
| Nguyễn Ngọc Dũng | 0.19 |
| Lê Hồng Nguyên | 0.19 |
| Dương Minh Tuấn | 0.19 |
| Đặng Thị Thúy Nga | 0.19 |
| Nguyễn Trọng Đáng | 0.19 |
| Nguyễn Trung Hiếu | 0.19 |
| Phạm Ngọc Hoài | 0.19 |
| Vũ Cảnh Hưng | 0.19 |
| Lê Phạm Duyên | 0.19 |
| Nhữ Mạnh Hùng | 0.19 |
| Trần Gia Kim | 0.19 |
| Dương Văn Đô | 0.19 |
| Nguyễn Thị Hạnh | 0.19 |
| Đặng Thị Nội | 0.19 |
| Nguyễn Thị Duyên | 0.19 |
| Ngô Thị Thu Nga | 0.19 |
| Bùi Thị Bích Thắm | 0.19 |
| Phạm Đức Toản | 0.19 |
| Trần Phong Lãm |  |

## Schedule

| ID | WBS | Task | Duration | Start | Finish | Predecessors | Total slack | Resources | Work | Cost | StartDay |
| --- | --- | --- | --- | --- | --- | --- | --- | --- | --- | --- | --- |
| 1 | 1 | **CDDL** | 336d | 2014-06-01 | 2015-05-02 |  | 0d |  | 72396.8h | 13,252.05 |  |
| 2 | 1.1 | **Khảo sát, thiết kế, xây dựng công cụ chuyển đổi dữ liệu** | 42d | 2014-06-01 | 2014-07-12 |  | 0d |  | 9077.6h | 1,670.55 |  |
| 3 | 1.1.1 | **Khảo sát hệ thống CSDL** | 14d | 2014-06-01 | 2014-06-14 |  | 0d |  | 1439.2h | 259.35 |  |
| 4 | 1.1.1.1 | Khảo sát yêu cầu về công cụ chuyển đổi và hệ thống CSDL cần chuyển đổi tại TCHQ | 1w | 2014-06-01 | 2014-06-07 |  | 0d | Trần Tuấn Hải; Chu Tiến Thành; Nguyễn Anh Tuấn; Nguyễn Trần Thành; Nguyễn Công Tự; Lê Đức Anh; Phạm Công Ước; Tôn Tích Dương Triều; Tạ Bảo Trung; Lê Tiến Dũng; Nguyễn Việt Phương; Nguyễn Phúc Đồng | 672h | 126 |  |
| 5 | 1.1.1.2 | Chuẩn bị kế hoạch công việc chi tiết để CDDL | 1w | 2014-06-08 | 2014-06-14 | 4 | 0d | Trần Tuấn Hải; Chu Tiến Thành; Nguyễn Anh Tuấn; Nguyễn Trần Thành; Nguyễn Công Tự; Lê Đức Anh; Phạm Công Ước; Tôn Tích Dương Triều [50%]; Tạ Bảo Trung [50%]; Lê Tiến Dũng [50%]; Nguyễn Việt Phương [50%]; Nguyễn Phúc Đồng [50%] | 532h | 99.75 |  |
| 6 | 1.1.1.3 | Giám sát đảm bảo chất lượng giai đoạn khảo sát | 2w | 2014-06-01 | 2014-06-14 |  | 0d | Nguyễn Thị Phương Liên [15%]; Nguyễn Thị Hương [15%]; Dương Thị Thảo [15%]; Trần Thị Thu Hằng [15%] | 67.2h | 12.6 |  |
| 7 | 1.1.1.4 | Quản trị dự án giai đoạn khảo sát | 2w | 2014-06-01 | 2014-06-14 |  | 0d | Phạm Thúy Loan; Trần Phong Lãm [50%] | 168h | 21 |  |
| 8 | 1.1.2 | **Xây dựng công cụ chuyển đổi dữ liệu** | 28d | 2014-06-15 | 2014-07-12 |  | 0d |  | 5846.4h | 1,075.2 | 14 |
| 9 | 1.1.2.1 | Phân tích thiết kế và xây dựng phân hệ chuyển đổi dữ liệu | 4w | 2014-06-15 | 2014-07-12 | 3 | 0d | Trần Phong Châu; Đoàn Anh Vũ; Nguyễn Phú Hưng; Nguyễn Lê Toàn; Lữ Quốc Hùng; Trần Thành Chung; Vũ Tiến Hào; Đào Xuân Thanh; Lê Thanh Xuân; Bùi Thị Thanh Mai | 2240h | 420 | 14 |
| 10 | 1.1.2.2 | Phân tích thiết kế và xây dựng phân hệ rà soát, kiểm tra dữ liệu | 4w | 2014-06-15 | 2014-07-12 | 3 | 0d | Phạm Đức Toản; Lê Quang Hùng; Lê Trâm Anh; Nguyễn Thế Huỳnh; Nguyễn Việt Anh; Nguyễn Ngọc Dũng; Lê Hồng Nguyên; Dương Minh Tuấn; Đặng Thị Thúy Nga; Nguyễn Trọng Đáng | 2240h | 420 | 14 |
| 11 | 1.1.2.3 | Phân tích thiết kế và xây dựng phân hệ phê duyệt dữ liệu | 4w | 2014-06-15 | 2014-07-12 | 3 | 0d | Nguyễn Trung Hiếu; Phạm Ngọc Hoài; Vũ Cảnh Hưng; Lê Phạm Duyên | 896h | 168 | 14 |
| 12 | 1.1.2.4 | Giám sát đảm bảo chất lượng giai đoạn xây dựng | 4w | 2014-06-15 | 2014-07-12 | 3 | 0d | Nguyễn Thị Phương Liên [15%]; Nguyễn Thị Hương [15%]; Dương Thị Thảo [15%]; Trần Thị Thu Hằng [15%] | 134.4h | 25.2 | 14 |
| 13 | 1.1.2.5 | Quản trị dự án giai đoạn xây dựng | 4w | 2014-06-15 | 2014-07-12 | 3 | 0d | Phạm Thúy Loan; Trần Phong Lãm [50%] | 336h | 42 | 14 |
| 14 | 1.1.3 | Kiểm thử và vận hành thử nghiệm công cụ chuyển đổi dữ liệu | 4w | 2014-06-15 | 2014-07-12 | 3 | 0d | Nhữ Mạnh Hùng; Trần Gia Kim; Dương Văn Đô; Nguyễn Thị Hạnh; Đặng Thị Nội; Nguyễn Thị Duyên; Ngô Thị Thu Nga; Bùi Thị Bích Thắm | 1792h | 336 | 14 |
| 15 | 1.2 | **Triển khai chuyển đổi dữ liệu** | 182d | 2014-07-13 | 2015-01-10 |  | 0d |  | 46519.2h | 8,599.5 | 42 |
| 16 | 1.2.1 | Chuyển đổi, tập trung dữ liệu các hệ thống cho Cục hải quan đầu tiên | 2w | 2014-07-13 | 2014-07-26 | 8 | 0d | Trần Phong Châu [30%]; Đoàn Anh Vũ; Nguyễn Phú Hưng [30%]; Nguyễn Lê Toàn [30%]; Lữ Quốc Hùng; Trần Thành Chung; Vũ Tiến Hào; Đào Xuân Thanh; Lê Thanh Xuân; Bùi Thị Thanh Mai; Lê Quang Hùng; Lê Trâm Anh; Nguyễn Thế Huỳnh; Nguyễn Việt Anh; Nguyễn Ngọc Dũng; Lê Hồng Nguyên; Dương Minh Tuấn; Đặng Thị Thúy Nga; Nguyễn Trọng Đáng; Phạm Đức Toản | 2004.8h | 375.9 | 42 |
| 17 | 1.2.2 | Kiểm tra, rà soát, phê duyệt dữ liệu các hệ thống cho Cục hải quan đầu tiên | 2w | 2014-07-13 | 2014-07-26 | 8 | 0d | Nhữ Mạnh Hùng; Trần Gia Kim; Dương Văn Đô; Nguyễn Thị Hạnh; Đặng Thị Nội; Nguyễn Thị Duyên; Ngô Thị Thu Nga; Bùi Thị Bích Thắm; Nguyễn Trung Hiếu; Phạm Ngọc Hoài; Vũ Cảnh Hưng; Lê Phạm Duyên | 1344h | 252 | 42 |
| 18 | 1.2.3 | Chuyển đổi, tập trung dữ liệu các hệ thống cho các Cục hải quan khu vực miền Bắc | 8w | 2014-07-27 | 2014-09-20 | 16, 17 | 0d | Trần Phong Châu [30%]; Đoàn Anh Vũ; Nguyễn Phú Hưng [30%]; Nguyễn Lê Toàn [30%]; Lữ Quốc Hùng; Trần Thành Chung; Vũ Tiến Hào; Đào Xuân Thanh; Lê Thanh Xuân; Bùi Thị Thanh Mai; Lê Quang Hùng; Lê Trâm Anh; Nguyễn Thế Huỳnh; Nguyễn Việt Anh; Nguyễn Ngọc Dũng; Lê Hồng Nguyên; Dương Minh Tuấn; Đặng Thị Thúy Nga; Nguyễn Trọng Đáng; Phạm Đức Toản | 8019.2h | 1,503.6 | 56 |
| 19 | 1.2.4 | Kiểm tra, rà soát, phê duyệt dữ liệu các hệ thống cho các Cục hải quan khu vực miền Bắc | 8w | 2014-07-27 | 2014-09-20 | 16, 17 | 0d | Nhữ Mạnh Hùng; Trần Gia Kim; Dương Văn Đô; Nguyễn Thị Hạnh; Đặng Thị Nội; Nguyễn Thị Duyên; Ngô Thị Thu Nga; Bùi Thị Bích Thắm; Nguyễn Trung Hiếu; Phạm Ngọc Hoài; Vũ Cảnh Hưng; Lê Phạm Duyên | 5376h | 1,008 | 56 |
| 20 | 1.2.5 | Chuyển đổi, tập trung dữ liệu các hệ thống cho các Cục hải quan khu vực miền Trung | 8w | 2014-09-21 | 2014-11-15 | 18, 19 | 0d | Trần Phong Châu [30%]; Đoàn Anh Vũ; Nguyễn Phú Hưng [30%]; Nguyễn Lê Toàn [30%]; Lữ Quốc Hùng; Trần Thành Chung; Vũ Tiến Hào; Đào Xuân Thanh; Lê Thanh Xuân; Bùi Thị Thanh Mai; Lê Quang Hùng; Lê Trâm Anh; Nguyễn Thế Huỳnh; Nguyễn Việt Anh; Nguyễn Ngọc Dũng; Lê Hồng Nguyên; Dương Minh Tuấn; Đặng Thị Thúy Nga; Nguyễn Trọng Đáng; Phạm Đức Toản | 8019.2h | 1,503.6 | 112 |
| 21 | 1.2.6 | Kiểm tra, rà soát, phê duyệt dữ liệu các hệ thống cho các Cục hải quan khu vực miền Trung | 8w | 2014-09-21 | 2014-11-15 | 18, 19 | 0d | Nhữ Mạnh Hùng; Trần Gia Kim; Dương Văn Đô; Nguyễn Thị Hạnh; Đặng Thị Nội; Nguyễn Thị Duyên; Ngô Thị Thu Nga; Bùi Thị Bích Thắm; Nguyễn Trung Hiếu; Phạm Ngọc Hoài; Vũ Cảnh Hưng; Lê Phạm Duyên | 5376h | 1,008 | 112 |
| 22 | 1.2.7 | Chuyển đổi, tập trung dữ liệu các hệ thống cho các Cục hải quan khu vực miền Nam | 8w | 2014-11-16 | 2015-01-10 | 20, 21 | 0d | Trần Phong Châu [30%]; Đoàn Anh Vũ; Nguyễn Phú Hưng [30%]; Nguyễn Lê Toàn [30%]; Lữ Quốc Hùng; Trần Thành Chung; Vũ Tiến Hào; Đào Xuân Thanh; Lê Thanh Xuân; Bùi Thị Thanh Mai; Lê Quang Hùng; Lê Trâm Anh; Nguyễn Thế Huỳnh; Nguyễn Việt Anh; Nguyễn Ngọc Dũng; Lê Hồng Nguyên; Dương Minh Tuấn; Đặng Thị Thúy Nga; Nguyễn Trọng Đáng; Phạm Đức Toản | 8019.2h | 1,503.6 | 168 |
| 23 | 1.2.8 | Kiểm tra, rà soát, phê duyệt dữ liệu các hệ thống cho các Cục hải quan khu vực miền Nam | 8w | 2014-11-16 | 2015-01-10 | 20, 21 | 0d | Nhữ Mạnh Hùng; Trần Gia Kim; Dương Văn Đô; Nguyễn Thị Hạnh; Đặng Thị Nội; Nguyễn Thị Duyên; Ngô Thị Thu Nga; Bùi Thị Bích Thắm; Nguyễn Trung Hiếu; Phạm Ngọc Hoài; Vũ Cảnh Hưng; Lê Phạm Duyên | 5376h | 1,008 | 168 |
| 24 | 1.2.9 | Giám sát đảm bảo chất lượng giai đoạn triển khai | 26w | 2014-07-13 | 2015-01-10 | 2 | 0d | Nguyễn Thị Phương Liên [15%]; Nguyễn Thị Hương [15%]; Dương Thị Thảo [15%]; Trần Thị Thu Hằng [15%] | 873.6h | 163.8 | 42 |
| 25 | 1.2.10 | Quản trị dự án giai đoạn triển khai | 26w | 2014-07-13 | 2015-01-10 | 2 | 0d | Phạm Thúy Loan; Trần Phong Lãm [45%] | 2111.2h | 273 | 42 |

| ID | WBS | Task | Duration | Start | Finish | Predecessors | Total slack | Resources | Work | Cost | StartDay |
| --- | --- | --- | --- | --- | --- | --- | --- | --- | --- | --- | --- |
| 26 | 1.3 | **Chuẩn bị thông tin danh mục dùng chung (CSF) cho hệ thống** | 28d | 2015-01-11 | 2015-02-07 |  | 0d |  | 4771.2h | 852.6 | 224 |
| 27 | 1.3.1 | Chuẩn bị thông tin danh mục dùng chung (CSF) | 1w | 2015-01-11 | 2015-01-17 | 15 | 0d | Nhữ Mạnh Hùng; Trần Gia Kim; Dương Văn Đô; Nguyễn Thị Hạnh; Đặng Thị Nội; Nguyễn Thị Duyên; Ngô Thị Thu Nga; Bùi Thị Bích Thắm; Nguyễn Trung Hiếu; Phạm Ngọc Hoài; Vũ Cảnh Hưng; Lê Phạm Duyên; Trần Phong Châu; Đoàn Anh Vũ; Nguyễn Phú Hưng; Nguyễn Lê Toàn | 896h | 168 | 224 |
| 28 | 1.3.2 | Chuẩn bị dữ liệu doanh nghiệp tham gia hoạt động XNK | 1w | 2015-01-18 | 2015-01-24 | 27 | 0d | Nhữ Mạnh Hùng; Trần Gia Kim; Dương Văn Đô; Nguyễn Thị Hạnh; Đặng Thị Nội; Nguyễn Thị Duyên; Ngô Thị Thu Nga; Bùi Thị Bích Thắm; Nguyễn Trung Hiếu; Phạm Ngọc Hoài; Vũ Cảnh Hưng; Lê Phạm Duyên; Trần Phong Châu; Đoàn Anh Vũ; Nguyễn Phú Hưng; Nguyễn Lê Toàn | 896h | 168 | 231 |
| 29 | 1.3.3 | Chuẩn bị dữ liệu quản lý rủi ro | 1w | 2015-01-25 | 2015-01-31 | 28 | 0d | Nhữ Mạnh Hùng; Trần Gia Kim; Dương Văn Đô; Nguyễn Thị Hạnh; Đặng Thị Nội; Nguyễn Thị Duyên; Ngô Thị Thu Nga; Bùi Thị Bích Thắm; Nguyễn Trung Hiếu; Phạm Ngọc Hoài; Vũ Cảnh Hưng; Lê Phạm Duyên; Trần Phong Châu; Đoàn Anh Vũ; Nguyễn Phú Hưng; Nguyễn Lê Toàn | 896h | 168 | 238 |
| 30 | 1.3.4 | Cập nhật dữ liệu vào hệ thống VNACCS/VCIS | 1w | 2015-02-01 | 2015-02-07 | 29 | 0d | Nhữ Mạnh Hùng; Trần Gia Kim; Dương Văn Đô; Nguyễn Thị Hạnh; Đặng Thị Nội; Nguyễn Thị Duyên; Ngô Thị Thu Nga; Bùi Thị Bích Thắm; Nguyễn Trung Hiếu; Phạm Ngọc Hoài; Vũ Cảnh Hưng; Lê Phạm Duyên; Trần Phong Châu; Đoàn Anh Vũ; Nguyễn Phú Hưng; Nguyễn Lê Toàn | 896h | 168 | 245 |
| 31 | 1.3.5 | Giám sát đảm bảo chất lượng giai đoạn chuẩn bị thông tin danh mục dùng chung | 4w | 2015-01-11 | 2015-02-07 | 15 | 0d | Nguyễn Thị Phương Liên [30%]; Nguyễn Thị Hương; Dương Thị Thảo; Trần Thị Thu Hằng | 739.2h | 138.6 | 224 |
| 32 | 1.3.6 | Quản trị dự án giai đoạn chuẩn bị thông tin danh mục dùng chung | 4w | 2015-01-11 | 2015-02-07 | 15 | 0d | Phạm Thúy Loan; Trần Phong Lãm | 448h | 42 | 224 |
| 33 | 1.4 | **Hỗ trợ triển khai running test VNACCS/VCIS và các hệ thống khác** | 84d | 2015-02-08 | 2015-05-02 |  | 0d |  | 12028.8h | 2,129.4 | 252 |
| 34 | 1.4.1 | Hỗ trợ các đơn vị hải quan vận hành thử hệ thống | 12w | 2015-02-08 | 2015-05-02 | 26 | 0d | Nhữ Mạnh Hùng; Trần Gia Kim; Dương Văn Đô; Nguyễn Thị Hạnh; Đặng Thị Nội; Nguyễn Thị Duyên; Ngô Thị Thu Nga; Bùi Thị Bích Thắm; Nguyễn Trung Hiếu; Phạm Ngọc Hoài; Vũ Cảnh Hưng; Lê Phạm Duyên; Trần Phong Châu [30%]; Đoàn Anh Vũ; Nguyễn Phú Hưng [30%]; Nguyễn Lê Toàn [30%] | 8870.4h | 1,663.2 | 252 |
| 35 | 1.4.2 | Giám sát đảm bảo chất lượng giai đoạn hỗ trợ triển khai | 12w | 2015-02-08 | 2015-05-02 | 26 | 0d | Nguyễn Thị Phương Liên [20%]; Nguyễn Thị Hương; Dương Thị Thảo; Trần Thị Thu Hằng [50%] | 1814.4h | 340.2 | 252 |
| 36 | 1.4.3 | Quản trị dự án giai đoạn hỗ trợ triển khai | 12w | 2015-02-08 | 2015-05-02 | 26 | 0d | Phạm Thúy Loan; Trần Phong Lãm | 1344h | 126 | 252 |
